# PJ251710

How a schedule from GanttProject changed from version to version. A marks actual dates.

## Version 1 (saved 2025-10-21)

Note of the change: 613 Agregado Gantt

| ID | WBS | Task | Duration | Start | Finish | Constraint |
| --- | --- | --- | --- | --- | --- | --- |
| 1 | 1 | **[PJ-00] Preparacion De entorno** | 0d | 2025-10-21 | 2025-10-21 | start no earlier than 2025-10-21 |
| 2 |  | [PJ-0001] Configurar Mono Repo | 1d | 2025-10-21 | 2025-10-21 |  |
| 3 |  | [PJ-0002] Levantar Contenedores Base | 3d | 2025-10-22 | 2025-10-24 | start no earlier than 2025-10-22 |

## Version 2 (saved 2025-10-21)

Note of the change: 613 Modificado gantt

Last finish 2025-10-24 → 2026-01-05 (+73d).

Added:

| ID | Task | Duration | Start | Finish | Predecessors | Constraint |
| --- | --- | --- | --- | --- | --- | --- |
| 4 | [PJ-0003] Configuración de redes y volúmenes | 4d | 2025-10-29 | 2025-11-03 | 3 | start no earlier than 2025-10-21 |
| 5 | [PJ-0004] Desarrollo de guías | 5d | 2025-11-04 | 2025-11-10 | 4 |  |
| 6 | [PJ-0005] Documentación inicial de entorno | 1d | 2025-11-11 | 2025-11-11 | 5 |  |
| 7 | **[PJ-01] Desarrollo microservicios Rust** | 0d | 2025-11-18 | 2025-11-18 |  |  |
| 8 | [PJ-0101] sgd-core-documents | 5d | 2025-11-18 | 2025-11-24 | 17 | start no earlier than 2025-10-21 |
| 9 | [PJ-0102] sgd-versions | 4d | 2025-11-25 | 2025-11-28 | 8 |  |
| 10 | [PJ-0103] sgd-trd | 4d | 2025-12-01 | 2025-12-04 | 9 |  |
| 11 | [PJ-0104] sgd-audit | 4d | 2025-12-05 | 2025-12-11 | 10 |  |
| 12 | [PJ-0105] sgd-relations | 4d | 2025-12-12 | 2025-12-17 | 11 |  |
| 13 | [PJ-0106] sgd-indexer | 4d | 2025-12-18 | 2025-12-23 | 12 |  |
| 14 | [PJ-0107] sgd-policy-engine | 4d | 2025-12-24 | 2025-12-30 | 13 |  |
| 15 | [PJ-0108] sgd-events-outbox | 3d | 2025-12-31 | 2026-01-05 | 14 |  |
| 16 | **[PJ-02] SDK** | 0d | 2025-11-12 | 2025-11-12 | 1 |  |
| 17 | [PJ-0201] Librerías Rust | 4d | 2025-11-12 | 2025-11-17 |  |  |
| 18 | [PJ-0202] Librerías Python | 4d | 2025-11-12 | 2025-11-17 |  |  |
| 19 | **[PJ-03] API Gateway** | 0d | 2025-11-18 | 2025-11-18 | 18 |  |
| 20 | [PJ-0301] Estructura y Base | 2d | 2025-11-18 | 2025-11-19 |  |  |
| 21 | [PJ-0302] Comunicación MQ | 3d | 2025-11-20 | 2025-11-24 | 20 |  |
| 22 | [PJ-0303] Autenticación y Seguridad | 2d | 2025-11-25 | 2025-11-26 | 21 |  |
| 23 | [PJ-0304] Endpoints | 6d | 2025-11-27 | 2025-12-04 | 22 |  |

Changed:

| ID | Task | Start | Finish | Predecessors | Other |
| --- | --- | --- | --- | --- | --- |
| 1 | **[PJ-00] Preparacion De entorno** | 2025-10-21 → 2025-10-23 (+2d) | 2025-10-21 → 2025-10-23 (+2d) |  | constraint start no earlier than 2025-10-21 → none |
| 2 | [PJ-0001] Configurar Mono Repo | 2025-10-21 → 2025-10-23 (+2d) | 2025-10-21 → 2025-10-23 (+2d) |  |  |
| 3 | [PJ-0002] Levantar Contenedores Base | 2025-10-22 → 2025-10-24 (+2d) | 2025-10-24 → 2025-10-28 (+4d) | none → 2 |  |

## Version 3 (saved 2025-10-23)

Note of the change: 613 Planning gantt

Last finish stays 2026-01-05.

Changed:

| ID | Task | Other |
| --- | --- | --- |
| 1 | **[PJ-00] Preparacion De entorno** | resources none → Marck D. Carrión Guzmán [0%] |
| 2 | [PJ-0001] Configurar Mono Repo | resources none → DevOps |
| 3 | [PJ-0002] Levantar Contenedores Base | resources none → DevOps |
| 4 | [PJ-0003] Configuración de redes y volúmenes | resources none → DevOps |
| 5 | [PJ-0004] Desarrollo de guías | resources none → DevOps |
| 6 | [PJ-0005] Documentación inicial de entorno | resources none → DevOps |
